# lab_01_task_1

Schedule from MS Project, 2023-03-01 to 2023-09-25, costs in ₽.

## Calendars

- Стандартный: Mon-Fri 09:00-13:00, 14:00-18:00; Sat-Sun off. Exceptions (off unless hours are given): 2023-03-07 09:00-13:00, 14:00-17:00 (Сокращенный предпраздничный день), 2023-03-08 (Международный женский день), 2023-05-01 (Праздник весны и труда), 2023-05-08 to 2023-05-09 (День Победы), 2023-06-12 (День России).

## Resources

| Resource | Group | Rate | Cost per use |
| --- | --- | --- | --- |
| Ведущий программист | Программирование | 10 | 100 |
| Программист#1 | Программирование | 7 | 50 |
| Программист#2 | Программирование | 7 | 50 |
| Программист#3 | Программирование | 7 | 50 |
| Программист#4 | Программирование | 7 | 50 |
| Системный аналитик | Анализ | 20 | 300 |
| Художник-дизайнер | Дизайн | 8 | 70 |
| Технический писатель | Документация | 5 | 20 |
| Web-дизайнер | Internet | 7 | 50 |
| 3D аниматор | Дизайн | 8 | 70 |
| Мультимедиа-корреспондент | M-медиа | 3 | 20 |
| Наборщик данных#1 | Ввод данных | 2 | 10 |
| Наборщик данных#2 | Ввод данных | 2 | 10 |
| Наборщик данных#3 | Ввод данных | 2 | 10 |
| Наборщик данных#4 | Ввод данных | 2 | 10 |
| Наборщик данных#5 | Ввод данных | 2 | 10 |
| Дополнительный сервер |  | 2 |  |

## Schedule

| ID | WBS | Task | Type | Duration | Start | Finish | Predecessors | Total slack | Free slack | Resources | Work | Cost |
| --- | --- | --- | --- | --- | --- | --- | --- | --- | --- | --- | --- | --- |
| 1 | 1 | **Разработка карты города** |  | 143d | 2023-03-01 09:00 | 2023-09-25 10:00 |  | 0d |  |  | 9579h | 49,608 |
| 2 | 1.1 | Начало проекта | milestone | 0w | 2023-03-01 09:00 | 2023-03-01 09:00 |  | 71.75d | 0d |  |  |  |
| 3 | 1.2 | **Создание интерфейса** |  | 112d | 2023-03-01 10:00 | 2023-08-11 11:00 | 2 | 0d | 2d |  | 560h | 5,550 |
| 4 | 1.2.1 | **Разработка дизайна интерфейса** |  | 25.5d | 2023-03-01 10:00 | 2023-04-06 16:00 |  | 71.5d | 0d |  | 320h | 2,770 |
| 5 | 1.2.1.1 | Разработка 2D графических элементов |  | 3w | 2023-03-01 10:00 | 2023-03-23 13:00 |  | 71.62d | 0d | Художник-дизайнер | 120h | 1,030 |
| 6 | 1.2.1.2 | Разработка 3D графических элементов |  | 2w | 2023-03-01 10:00 | 2023-03-16 12:00 | 5SS | 71.62d | 0d | 3D аниматор | 80h | 710 |
| 7 | 1.2.1.3 | Создание заставки |  | 3w | 2023-03-16 14:00 | 2023-04-06 16:00 | 6 | 71.5d | 72d | 3D аниматор | 120h | 1,030 |
| 8 | 1.2.2 | Программирование интерфейса |  | 15d | 2023-07-21 11:00 | 2023-08-11 11:00 | 4, 13 | 0d |  | Программист#3; Программист#4 | 240h | 1,780 |
| 9 | 1.3 | **Построение базы объектов** |  | 85.12d | 2023-03-23 15:00 | 2023-07-26 16:00 |  | 42.38d |  | Дополнительный сервер | 5721h | 15,532 |
| 10 | 1.3.1 | Анализ и построение структуры базы объектов |  | 2w | 2023-03-23 15:00 | 2023-04-06 16:00 |  | 42.38d | 0d | Системный аналитик | 80h | 1,900 |
| 11 | 1.3.2 | Программирование средств обработки базы объектов |  | 3w | 2023-04-06 16:00 | 2023-04-27 16:00 | 10 | 42.38d | 0d | Программист#3; Программист#4 | 240h | 1,780 |
| 12 | 1.3.3 | Наполнение базы объектов |  | 60d | 2023-04-27 16:00 | 2023-07-26 16:00 | 11 | 42.38d |  | Наборщик данных#1; Наборщик данных#2; Наборщик данных#3; Наборщик данных#4; Наборщик данных#5 | 2400h | 4,850 |
| 13 | 1.4 | **Создание ядра GIS** |  | 97d | 2023-03-01 10:00 | 2023-07-21 11:00 |  | 0d |  |  | 1880h | 18,680 |
| 14 | 1.4.1 | Анализ и проектирование ядра |  | 3.05w | 2023-03-01 10:00 | 2023-03-23 13:00 |  | 0d |  | Ведущий программист; Системный аналитик | 240h | 4,000 |
| 15 | 1.4.2 | Создание модели ядра |  | 5.12w | 2023-03-23 14:00 | 2023-04-28 10:00 | 14 | 0d |  | Программист#1; Ведущий программист | 400h | 3,550 |
| 16 | 1.4.3 | Тестирование модели ядра |  | 1w | 2023-04-28 10:00 | 2023-05-10 10:00 | 15 | 0d |  | Программист#1 | 40h | 330 |
| 17 | 1.4.4 | Создание рабочей версии ядра |  | 10.22w | 2023-05-10 10:00 | 2023-07-21 11:00 | 16 | 0d | 2d | Программист#1; Программист#2; Ведущий программист | 1200h | 9,800 |
| 18 | 1.5 | Создание мультимедиа – наполнения |  | 6w | 2023-04-06 16:00 | 2023-05-24 13:00 | 4 | 86.62d | 85d | Мультимедиа-корреспондент | 240h | 740 |
| 19 | 1.6 | Создание справочной системы |  | 10d | 2023-08-22 15:00 | 2023-09-05 16:00 | 8 | 13.38d | 20d | Технический писатель | 80h | 420 |
| 20 | 1.7 | **Создание руководства пользователя** |  | 17.25d | 2023-07-28 11:00 | 2023-08-22 13:00 | 8FS-10d | 0d | 2d |  | 160h | 1,010 |
| 21 | 1.7.1 | Разработка дизайна руководства |  | 1w | 2023-07-28 11:00 | 2023-08-04 11:00 |  | 0d |  | Художник-дизайнер | 40h | 390 |
| 22 | 1.7.2 | Написание руководства пользователя |  | 15d | 2023-08-01 11:00 | 2023-08-22 13:00 | 21SS+2d | 0d |  | Технический писатель | 120h | 620 |
| 23 | 1.8 | **Создание web – сайта и поддержка** |  | 23.38d | 2023-08-01 11:00 | 2023-09-01 15:00 |  | 0d |  |  | 248h | 2,106 |
| 24 | 1.8.1 | Разработка структуры сайта |  | 1d | 2023-08-01 11:00 | 2023-08-02 11:00 | 22SS | 0d |  | Web-дизайнер | 8h | 106 |
| 25 | 1.8.2 | Разработка дизайна сайта |  | 1.43w | 2023-08-02 11:00 | 2023-08-11 12:00 | 24 | 0d |  | Web-дизайнер; 3D аниматор; Художник-дизайнер | 120h | 1,110 |
| 26 | 1.8.3 | Наполнение сайта |  | 3w | 2023-08-11 12:00 | 2023-09-01 15:00 | 25 | 0d | 2d | Web-дизайнер | 120h | 890 |
| 27 | 1.9 | Тестирование сайта |  | 4.1w | 2023-08-25 15:00 | 2023-09-25 10:00 | 23FS-1w | 0d |  | Ведущий программист; Программист#1; Программист#2 | 480h | 4,040 |
| 28 | 1.10 | Сдача сайта в эксплуатацию | milestone | 0w | 2023-09-25 10:00 | 2023-09-25 10:00 | 27 | 0d | 2d |  |  |  |

Notes:
- 1: Команда разработчиков из 16 человек занимается созданием карты города на основе собственного модуля отображения. Проект должен быть завершен в течение 6 месяцев. Бюджет проекта: 50 000 рублей.

| ID | WBS | Task | Type | Duration | Start | Finish | Total slack | Constraint | Resources | Work | Cost |
| --- | --- | --- | --- | --- | --- | --- | --- | --- | --- | --- | --- |
| 29 | 1.11 | **Совещание** |  | 140d | 2023-03-01 09:00 | 2023-09-20 10:00 | 0d |  |  | 210h | 1,530 |
| 30 | 1.11.1 | Совещание 1 | manual | 1h | 2023-03-01 09:00 | 2023-03-01 10:00 |  | start no earlier than 2023-03-01 09:00 | 3D аниматор; Web-дизайнер; Ведущий программист; Мультимедиа-корреспондент; Системный аналитик; Технический писатель; Художник-дизайнер | 7h | 51 |
| 31 | 1.11.2 | Совещание 2 | manual | 1h | 2023-03-08 09:00 | 2023-03-08 10:00 |  | start no earlier than 2023-03-08 09:00 | 3D аниматор; Web-дизайнер; Ведущий программист; Мультимедиа-корреспондент; Системный аналитик; Технический писатель; Художник-дизайнер | 7h | 51 |
| 32 | 1.11.3 | Совещание 3 | manual | 1h | 2023-03-15 09:00 | 2023-03-15 10:00 |  | start no earlier than 2023-03-15 09:00 | 3D аниматор; Web-дизайнер; Ведущий программист; Мультимедиа-корреспондент; Системный аналитик; Технический писатель; Художник-дизайнер | 7h | 51 |
| 33 | 1.11.4 | Совещание 4 | manual | 1h | 2023-03-22 09:00 | 2023-03-22 10:00 |  | start no earlier than 2023-03-22 09:00 | 3D аниматор; Web-дизайнер; Ведущий программист; Мультимедиа-корреспондент; Системный аналитик; Технический писатель; Художник-дизайнер | 7h | 51 |
| 34 | 1.11.5 | Совещание 5 | manual | 1h | 2023-03-29 09:00 | 2023-03-29 10:00 |  | start no earlier than 2023-03-29 09:00 | 3D аниматор; Web-дизайнер; Ведущий программист; Мультимедиа-корреспондент; Системный аналитик; Технический писатель; Художник-дизайнер | 7h | 51 |
| 35 | 1.11.6 | Совещание 6 | manual | 1h | 2023-04-05 09:00 | 2023-04-05 10:00 |  | start no earlier than 2023-04-05 09:00 | 3D аниматор; Web-дизайнер; Ведущий программист; Мультимедиа-корреспондент; Системный аналитик; Технический писатель; Художник-дизайнер | 7h | 51 |
| 36 | 1.11.7 | Совещание 7 | manual | 1h | 2023-04-12 09:00 | 2023-04-12 10:00 |  | start no earlier than 2023-04-12 09:00 | 3D аниматор; Web-дизайнер; Ведущий программист; Мультимедиа-корреспондент; Системный аналитик; Технический писатель; Художник-дизайнер | 7h | 51 |
| 37 | 1.11.8 | Совещание 8 | manual | 1h | 2023-04-19 09:00 | 2023-04-19 10:00 |  | start no earlier than 2023-04-19 09:00 | 3D аниматор; Web-дизайнер; Ведущий программист; Мультимедиа-корреспондент; Системный аналитик; Технический писатель; Художник-дизайнер | 7h | 51 |
| 38 | 1.11.9 | Совещание 9 | manual | 1h | 2023-04-26 09:00 | 2023-04-26 10:00 |  | start no earlier than 2023-04-26 09:00 | 3D аниматор; Web-дизайнер; Ведущий программист; Мультимедиа-корреспондент; Системный аналитик; Технический писатель; Художник-дизайнер | 7h | 51 |
| 39 | 1.11.10 | Совещание 10 | manual | 1h | 2023-05-03 09:00 | 2023-05-03 10:00 |  | start no earlier than 2023-05-03 09:00 | 3D аниматор; Web-дизайнер; Ведущий программист; Мультимедиа-корреспондент; Системный аналитик; Технический писатель; Художник-дизайнер | 7h | 51 |
| 40 | 1.11.11 | Совещание 11 | manual | 1h | 2023-05-10 09:00 | 2023-05-10 10:00 |  | start no earlier than 2023-05-10 09:00 | 3D аниматор; Web-дизайнер; Ведущий программист; Мультимедиа-корреспондент; Системный аналитик; Технический писатель; Художник-дизайнер | 7h | 51 |
| 41 | 1.11.12 | Совещание 12 | manual | 1h | 2023-05-17 09:00 | 2023-05-17 10:00 |  | start no earlier than 2023-05-17 09:00 | 3D аниматор; Web-дизайнер; Ведущий программист; Мультимедиа-корреспондент; Системный аналитик; Технический писатель; Художник-дизайнер | 7h | 51 |
| 42 | 1.11.13 | Совещание 13 | manual | 1h | 2023-05-24 09:00 | 2023-05-24 10:00 |  | start no earlier than 2023-05-24 09:00 | 3D аниматор; Web-дизайнер; Ведущий программист; Мультимедиа-корреспондент; Системный аналитик; Технический писатель; Художник-дизайнер | 7h | 51 |
| 43 | 1.11.14 | Совещание 14 | manual | 1h | 2023-05-31 09:00 | 2023-05-31 10:00 |  | start no earlier than 2023-05-31 09:00 | 3D аниматор; Web-дизайнер; Ведущий программист; Мультимедиа-корреспондент; Системный аналитик; Технический писатель; Художник-дизайнер | 7h | 51 |
| 44 | 1.11.15 | Совещание 15 | manual | 1h | 2023-06-07 09:00 | 2023-06-07 10:00 |  | start no earlier than 2023-06-07 09:00 | 3D аниматор; Web-дизайнер; Ведущий программист; Мультимедиа-корреспондент; Системный аналитик; Технический писатель; Художник-дизайнер | 7h | 51 |
| 45 | 1.11.16 | Совещание 16 | manual | 1h | 2023-06-14 09:00 | 2023-06-14 10:00 |  | start no earlier than 2023-06-14 09:00 | 3D аниматор; Web-дизайнер; Ведущий программист; Мультимедиа-корреспондент; Системный аналитик; Технический писатель; Художник-дизайнер | 7h | 51 |
| 46 | 1.11.17 | Совещание 17 | manual | 1h | 2023-06-21 09:00 | 2023-06-21 10:00 |  | start no earlier than 2023-06-21 09:00 | 3D аниматор; Web-дизайнер; Ведущий программист; Мультимедиа-корреспондент; Системный аналитик; Технический писатель; Художник-дизайнер | 7h | 51 |
| 47 | 1.11.18 | Совещание 18 | manual | 1h | 2023-06-28 09:00 | 2023-06-28 10:00 |  | start no earlier than 2023-06-28 09:00 | 3D аниматор; Web-дизайнер; Ведущий программист; Мультимедиа-корреспондент; Системный аналитик; Технический писатель; Художник-дизайнер | 7h | 51 |
| 48 | 1.11.19 | Совещание 19 | manual | 1h | 2023-07-05 09:00 | 2023-07-05 10:00 |  | start no earlier than 2023-07-05 09:00 | 3D аниматор; Web-дизайнер; Ведущий программист; Мультимедиа-корреспондент; Системный аналитик; Технический писатель; Художник-дизайнер | 7h | 51 |
| 49 | 1.11.20 | Совещание 20 | manual | 1h | 2023-07-12 09:00 | 2023-07-12 10:00 |  | start no earlier than 2023-07-12 09:00 | 3D аниматор; Web-дизайнер; Ведущий программист; Мультимедиа-корреспондент; Системный аналитик; Технический писатель; Художник-дизайнер | 7h | 51 |
| 50 | 1.11.21 | Совещание 21 | manual | 1h | 2023-07-19 09:00 | 2023-07-19 10:00 |  | start no earlier than 2023-07-19 09:00 | 3D аниматор; Web-дизайнер; Ведущий программист; Мультимедиа-корреспондент; Системный аналитик; Технический писатель; Художник-дизайнер | 7h | 51 |
| 51 | 1.11.22 | Совещание 22 | manual | 1h | 2023-07-26 09:00 | 2023-07-26 10:00 |  | start no earlier than 2023-07-26 09:00 | 3D аниматор; Web-дизайнер; Ведущий программист; Мультимедиа-корреспондент; Системный аналитик; Технический писатель; Художник-дизайнер | 7h | 51 |
| 52 | 1.11.23 | Совещание 23 | manual | 1h | 2023-08-02 09:00 | 2023-08-02 10:00 |  | start no earlier than 2023-08-02 09:00 | 3D аниматор; Web-дизайнер; Ведущий программист; Мультимедиа-корреспондент; Системный аналитик; Технический писатель; Художник-дизайнер | 7h | 51 |
| 53 | 1.11.24 | Совещание 24 | manual | 1h | 2023-08-09 09:00 | 2023-08-09 10:00 |  | start no earlier than 2023-08-09 09:00 | 3D аниматор; Web-дизайнер; Ведущий программист; Мультимедиа-корреспондент; Системный аналитик; Технический писатель; Художник-дизайнер | 7h | 51 |
| 54 | 1.11.25 | Совещание 25 | manual | 1h | 2023-08-16 09:00 | 2023-08-16 10:00 |  | start no earlier than 2023-08-16 09:00 | 3D аниматор; Web-дизайнер; Ведущий программист; Мультимедиа-корреспондент; Системный аналитик; Технический писатель; Художник-дизайнер | 7h | 51 |
| 55 | 1.11.26 | Совещание 26 | manual | 1h | 2023-08-23 09:00 | 2023-08-23 10:00 |  | start no earlier than 2023-08-23 09:00 | 3D аниматор; Web-дизайнер; Ведущий программист; Мультимедиа-корреспондент; Системный аналитик; Технический писатель; Художник-дизайнер | 7h | 51 |
| 56 | 1.11.27 | Совещание 27 | manual | 1h | 2023-08-30 09:00 | 2023-08-30 10:00 |  | start no earlier than 2023-08-30 09:00 | 3D аниматор; Web-дизайнер; Ведущий программист; Мультимедиа-корреспондент; Системный аналитик; Технический писатель; Художник-дизайнер | 7h | 51 |
| 57 | 1.11.28 | Совещание 28 | manual | 1h | 2023-09-06 09:00 | 2023-09-06 10:00 |  | start no earlier than 2023-09-06 09:00 | 3D аниматор; Web-дизайнер; Ведущий программист; Мультимедиа-корреспондент; Системный аналитик; Технический писатель; Художник-дизайнер | 7h | 51 |
| 58 | 1.11.29 | Совещание 29 | manual | 1h | 2023-09-13 09:00 | 2023-09-13 10:00 |  | start no earlier than 2023-09-13 09:00 | 3D аниматор; Web-дизайнер; Ведущий программист; Мультимедиа-корреспондент; Системный аналитик; Технический писатель; Художник-дизайнер | 7h | 51 |
| 59 | 1.11.30 | Совещание 30 | manual | 1h | 2023-09-20 09:00 | 2023-09-20 10:00 |  | start no earlier than 2023-09-20 09:00 | 3D аниматор; Web-дизайнер; Ведущий программист; Мультимедиа-корреспондент; Системный аналитик; Технический писатель; Художник-дизайнер | 7h | 51 |
