# Разработка карты города

Schedule from MS Project, 2023-03-01 to 2023-08-02, status date 2023-05-06, costs in ₽, A marks actual dates.

## Calendars

- Стандартный: Mon-Fri 09:00-13:00, 14:00-18:00; Sat-Sun off. Exceptions (off unless hours are given): 2023-03-08 (Международный женский день), 2023-05-01 (Праздник весны и труда), 2023-05-08 to 2023-05-09 (День Победы), 2023-06-12 (День России).

## Resources

| Resource | Group | Rate | Cost per use |
| --- | --- | --- | --- |
| Ведущий программист | Программирование | 10 | 100 |
| Программист#1 | Программирование | 7 | 50 |
| Программист#2 | Программирование | 7 | 50 |
| Программист#3 | Программирование | 7 | 50 |
| Программист#4 | Программирование | 7 | 50 |
| Системный аналитик | Анализ | 20 | 300 |
| Художник-дизайнер | Дизайн | 8 | 70 |
| Технический писатель | Документация | 5 | 20 |
| Web-дизайнер | Internet | 7 | 50 |
| 3D аниматор | Дизайн | 8 | 70 |
| Мультимедиа-корреспондент | M-медиа | 3 | 20 |
| Наборщик данных#1 | Ввод данных | 2 | 10 |
| Наборщик данных#2 | Ввод данных | 2 | 10 |
| Наборщик данных#3 | Ввод данных | 2 | 10 |
| Наборщик данных#4 | Ввод данных | 2 | 10 |
| Наборщик данных#5 | Ввод данных | 2 | 10 |
| Дополнительный сервер |  | 2 |  |
| Собственный сервер |  | 3200 |  |
| Преподаватель |  | 17.5 |  |
| Программист-стажер |  | 4 | 50 |

## Schedule

| ID | WBS | Task | Type | Duration | Start | Finish | Predecessors | Complete | Remaining | Baseline start | Baseline finish | Baseline duration | Total slack | Free slack | Resources | Work | Actual work | Cost | Baseline cost | Actual cost |
| --- | --- | --- | --- | --- | --- | --- | --- | --- | --- | --- | --- | --- | --- | --- | --- | --- | --- | --- | --- | --- |
| 1 | 1 | Начало проекта | milestone | 0w | 2023-03-01 09:00 A | 2023-03-01 09:00 A |  | 100% |  | 2023-03-01 09:00 | 2023-03-01 09:00 | 0w |  |  |  |  |  |  |  |  |
| 2 | 2 | **Создание интерфейса** |  | 84.73d | 2023-03-01 10:00 A | 2023-07-04 16:52 | 1 | 77% | 19.26d | 2023-03-01 10:00 | 2023-07-14 11:29 | 92.06d | 0d | 2.17d |  | 627.4h | 387.4h | 6,785.2 | 5,550 | 4,607.2 |
| 3 | 2.1 | **Разработка дизайна интерфейса** |  | 36.62d | 2023-03-01 10:00 A | 2023-04-21 16:00 A |  | 100% |  | 2023-03-01 10:00 | 2023-04-06 16:00 | 25.5d |  |  |  | 387.4h | 387.4h | 3,837.2 | 2,770 | 3,837.2 |
| 4 | 2.1.1 | Разработка 2D графических элементов |  | 3w | 2023-03-01 10:00 A | 2023-03-23 13:00 A |  | 100% |  | 2023-03-01 10:00 | 2023-03-23 13:00 | 3w |  |  | Художник-дизайнер | 120h | 120h | 1,030 | 1,030 | 1,030 |
| 5 | 2.1.2 | Разработка 3D графических элементов |  | 2w | 2023-03-01 10:00 A | 2023-03-16 11:00 A | 4SS | 100% |  | 2023-03-01 10:00 | 2023-03-16 12:00 | 2w |  |  | 3D аниматор; Художник-дизайнер [20%] | 59.4h | 59.4h | 559.2 | 710 | 559.2 |
| 6 | 2.1.3 | Создание заставки |  | 26d | 2023-03-16 14:00 A | 2023-04-21 16:00 A | 5 | 100% |  | 2023-03-16 14:00 | 2023-04-06 16:00 | 3w |  |  | 3D аниматор; Художник-дизайнер [20%] | 208h | 208h | 2,248 | 1,030 | 2,248 |
| 7 | 2.2 | Программирование интерфейса |  | 15d | 2023-06-13 16:52 | 2023-07-04 16:52 | 3, 12 |  |  | 2023-06-23 11:29 | 2023-07-14 11:29 | 15d | 0d |  | Программист#3; Программист#4 | 240h |  | 1,948 | 1,780 |  |
| 8 | 3 | **Построение базы объектов** |  | 85.12d | 2023-03-23 15:00 A | 2023-07-26 16:00 |  | 36% | 54.83d | 2023-03-23 15:00 | 2023-07-26 16:00 | 85.12d | 4.44d |  | Дополнительный сервер; Собственный сервер | 2915h | 725h | 13,206.8 | 15,532 | 4,986.8 |
| 9 | 3.1 | Анализ и построение структуры базы объектов |  | 2w | 2023-03-23 15:00 A | 2023-04-06 16:00 A |  | 100% |  | 2023-03-23 15:00 | 2023-04-06 16:00 | 2w |  |  | Системный аналитик | 80h | 80h | 1,900 | 1,900 | 1,900 |
| 10 | 3.2 | Программирование средств обработки базы объектов |  | 3w | 2023-04-06 16:00 A | 2023-04-27 16:00 A | 9 | 100% |  | 2023-04-06 16:00 | 2023-04-27 16:00 | 3w |  |  | Программист#3; Программист#4 | 240h | 240h | 1,866.8 | 1,780 | 1,866.8 |
| 11 | 3.3 | Наполнение базы объектов |  | 60d | 2023-04-27 16:00 A | 2023-07-26 16:00 | 10 | 9% | 54.75d | 2023-04-27 16:00 | 2023-07-26 16:00 | 60d | 4.44d |  | Наборщик данных#1; Наборщик данных#2; Наборщик данных#3; Наборщик данных#4; Наборщик данных#5 | 2400h | 210h | 4,850 | 4,850 | 470 |
| 12 | 4 | **Создание ядра GIS** |  | 69.73d | 2023-03-01 10:00 A | 2023-06-13 16:52 |  | 67% | 23.23d | 2023-03-01 10:00 | 2023-06-23 11:29 | 77.06d | 0d |  |  | 1960h | 1210.55h | 18,697.56 | 18,042.86 | 12,962.51 |
| 13 | 4.1 | Анализ и проектирование ядра |  | 3.05w | 2023-03-01 10:00 A | 2023-03-23 13:00 A |  | 100% |  | 2023-03-01 10:00 | 2023-03-23 13:00 | 3.05w |  |  | Ведущий программист; Системный аналитик | 240h | 240h | 4,000 | 4,000 | 4,000 |
| 14 | 4.2 | Создание модели ядра |  | 2.42w | 2023-03-23 14:00 A | 2023-04-10 14:56 A | 13 | 100% |  | 2023-03-23 14:00 | 2023-04-06 14:49 | 2.02w |  |  | Программист#1; Ведущий программист; Программист#2; Программист#3; Программист#4 | 480h | 480h | 3,943.75 | 3,336.46 | 3,943.75 |
| 15 | 4.3 | Тестирование модели ядра |  | 1w | 2023-04-06 14:49 A | 2023-04-13 14:49 A | 14 | 100% |  | 2023-04-06 14:49 | 2023-04-13 14:49 | 1w |  |  | Программист#1 | 40h | 40h | 330 | 330 | 330 |
| 16 | 4.4 | Создание рабочей версии ядра |  | 7.85w | 2023-04-13 14:49 A | 2023-06-13 16:52 | 15 | 39% | 4.77w | 2023-04-13 14:49 | 2023-06-23 11:29 | 9.34w | 0d | 2.17d | Программист#1; Программист#2; Ведущий программист; Программист#3; Программист#4; Программист-стажер | 1200h | 450.55h | 9,423.82 | 9,376.4 | 4,018.76 |
| 17 | 5 | Создание мультимедиа – наполнения |  | 6w | 2023-04-06 16:00 A | 2023-05-24 13:00 | 3 | 66% | 2.05w | 2023-04-06 16:00 | 2023-05-24 13:00 | 6w | 48.69d | 48.88d | Мультимедиа-корреспондент | 240h | 158h | 804.2 | 740 | 533.6 |
| 18 | 6 | Создание справочной системы |  | 10d | 2023-07-14 10:52 | 2023-07-28 11:52 | 7 |  |  | 2023-07-25 15:29 | 2023-08-08 16:29 | 10d | 2.83d | 10.27d | Технический писатель | 80h |  | 420 | 420 |  |
| 19 | 7 | **Создание руководства пользователя** |  | 17.25d | 2023-06-20 16:52 | 2023-07-14 09:52 | 7FS-10d |  |  | 2023-06-30 11:29 | 2023-07-25 14:29 | 17.25d | 0d | 2.17d |  | 160h |  | 1,010 | 1,010 |  |
| 20 | 7.1 | Разработка дизайна руководства |  | 1w | 2023-06-20 16:52 | 2023-06-27 16:52 |  |  |  | 2023-06-30 11:29 | 2023-07-07 11:29 | 1w | 0d |  | Художник-дизайнер | 40h |  | 390 | 390 |  |
| 21 | 7.2 | Написание руководства пользователя |  | 15d | 2023-06-22 16:52 | 2023-07-14 09:52 | 20SS+2d |  |  | 2023-07-04 11:29 | 2023-07-25 14:29 | 15d | 0d |  | Технический писатель | 120h |  | 620 | 620 |  |
| 22 | 8 | **Создание web – сайта и поддержка** |  | 23.23d | 2023-06-22 16:52 | 2023-07-26 09:45 |  |  |  | 2023-07-04 11:29 | 2023-08-04 15:29 | 23.38d | 0d |  |  | 248h |  | 2,106 | 2,106 |  |
| 23 | 8.1 | Разработка структуры сайта |  | 1d | 2023-06-22 16:52 | 2023-06-23 16:52 | 21SS |  |  | 2023-07-04 11:29 | 2023-07-05 11:29 | 1d | 0d |  | Web-дизайнер | 8h |  | 106 | 106 |  |
| 24 | 8.2 | Разработка дизайна сайта |  | 1.4w | 2023-06-23 16:52 | 2023-07-04 16:45 | 23 |  |  | 2023-07-05 11:29 | 2023-07-14 12:29 | 1.43w | 0d |  | Web-дизайнер; 3D аниматор; Художник-дизайнер | 120h |  | 1,110 | 1,110 |  |
| 25 | 8.3 | Наполнение сайта |  | 3w | 2023-07-04 16:45 | 2023-07-26 09:45 | 24 |  |  | 2023-07-14 12:29 | 2023-08-04 15:29 | 3w | 0d | 2.17d | Web-дизайнер | 120h |  | 890 | 890 |  |
| 26 | 9 | Тестирование сайта |  | 2.02w | 2023-07-19 09:45 | 2023-08-02 10:30 | 22FS-1w |  |  | 2023-07-28 15:29 | 2023-08-28 10:29 | 4.1w | 0d |  | Ведущий программист; Программист#1; Программист#2; Программист-стажер; Программист#3; Программист#4 | 480h |  | 3,929.54 | 4,040 |  |
| 27 | 10 | Сдача сайта в эксплуатацию | milestone | 0w | 2023-08-02 10:30 | 2023-08-02 10:30 | 26 |  |  | 2023-08-28 10:29 | 2023-08-28 10:29 | 0w | 0d | 2.17d |  |  |  |  |  |  |

| ID | WBS | Task | Type | Duration | Start | Finish | Complete | Remaining | Baseline start | Baseline finish | Baseline duration | Total slack | Constraint | Resources | Work | Actual work | Cost | Baseline cost | Actual cost |
| --- | --- | --- | --- | --- | --- | --- | --- | --- | --- | --- | --- | --- | --- | --- | --- | --- | --- | --- | --- |
| 28 | 11 | **Совещание** |  | 105.12d | 2023-03-01 09:00 A | 2023-08-02 10:00 | 43% | 59.42d | 2023-03-01 09:00 | 2023-08-23 10:00 | 120d | 0d |  |  | 159h | 68h | 1,157 | 1,326 | 494 |
| 29 | 11.1 | Совещание 1 | manual | 1h | 2023-03-01 09:00 A | 2023-03-01 10:00 A | 100% |  | 2023-03-01 09:00 | 2023-03-01 10:00 | 1h |  | start no earlier than 2023-03-01 09:00 | 3D аниматор; Web-дизайнер; Ведущий программист; Мультимедиа-корреспондент; Системный аналитик; Технический писатель; Художник-дизайнер | 7h | 7h | 51 | 51 | 51 |
| 30 | 11.2 | Совещание 2 | manual | 1h | 2023-03-08 09:00 A | 2023-03-08 10:00 A | 100% |  | 2023-03-08 09:00 | 2023-03-08 10:00 | 1h |  | start no earlier than 2023-03-08 09:00 | 3D аниматор; Web-дизайнер; Ведущий программист; Мультимедиа-корреспондент; Системный аналитик; Технический писатель; Художник-дизайнер | 7h | 7h | 51 | 51 | 51 |
| 31 | 11.3 | Совещание 3 | manual | 1h | 2023-03-15 09:00 A | 2023-03-15 10:00 A | 100% |  | 2023-03-15 09:00 | 2023-03-15 10:00 | 1h |  | start no earlier than 2023-03-15 09:00 | Web-дизайнер; Ведущий программист; Мультимедиа-корреспондент; Системный аналитик; Технический писатель; Художник-дизайнер | 6h | 6h | 43 | 51 | 43 |
| 32 | 11.4 | Совещание 4 | manual | 1h | 2023-03-22 09:00 A | 2023-03-22 10:00 A | 100% |  | 2023-03-22 09:00 | 2023-03-22 10:00 | 1h |  | start no earlier than 2023-03-22 09:00 | Web-дизайнер; Ведущий программист; Мультимедиа-корреспондент; Системный аналитик; Технический писатель; Художник-дизайнер | 6h | 6h | 43 | 51 | 43 |
| 33 | 11.5 | Совещание 5 | manual | 1h | 2023-03-29 09:00 A | 2023-03-29 10:00 A | 100% |  | 2023-03-29 09:00 | 2023-03-29 10:00 | 1h |  | start no earlier than 2023-03-29 09:00 | 3D аниматор; Web-дизайнер; Ведущий программист; Мультимедиа-корреспондент; Системный аналитик; Технический писатель; Художник-дизайнер | 7h | 7h | 51 | 51 | 51 |
| 34 | 11.6 | Совещание 6 | manual | 1h | 2023-04-05 09:00 A | 2023-04-05 10:00 A | 100% |  | 2023-04-05 09:00 | 2023-04-05 10:00 | 1h |  | start no earlier than 2023-04-05 09:00 | 3D аниматор; Web-дизайнер; Ведущий программист; Мультимедиа-корреспондент; Системный аналитик; Технический писатель; Художник-дизайнер | 7h | 7h | 51 | 51 | 51 |
| 35 | 11.7 | Совещание 7 | manual | 1h | 2023-04-12 09:00 A | 2023-04-12 10:00 A | 100% |  | 2023-04-12 09:00 | 2023-04-12 10:00 | 1h |  | start no earlier than 2023-04-12 09:00 | 3D аниматор; Web-дизайнер; Ведущий программист; Мультимедиа-корреспондент; Системный аналитик; Технический писатель; Художник-дизайнер | 7h | 7h | 51 | 51 | 51 |
| 36 | 11.8 | Совещание 8 | manual | 1h | 2023-04-19 09:00 A | 2023-04-19 10:00 A | 100% |  | 2023-04-19 09:00 | 2023-04-19 10:00 | 1h |  | start no earlier than 2023-04-19 09:00 | 3D аниматор; Web-дизайнер; Ведущий программист; Мультимедиа-корреспондент; Системный аналитик; Технический писатель; Художник-дизайнер | 7h | 7h | 51 | 51 | 51 |
| 37 | 11.9 | Совещание 9 | manual | 1h | 2023-04-26 09:00 A | 2023-04-26 10:00 A | 100% |  | 2023-04-26 09:00 | 2023-04-26 10:00 | 1h |  | start no earlier than 2023-04-26 09:00 | 3D аниматор; Web-дизайнер; Ведущий программист; Мультимедиа-корреспондент; Системный аналитик; Технический писатель; Художник-дизайнер | 7h | 7h | 51 | 51 | 51 |
| 38 | 11.10 | Совещание 10 | manual | 1h | 2023-05-03 09:00 A | 2023-05-03 10:00 A | 100% |  | 2023-05-03 09:00 | 2023-05-03 10:00 | 1h |  | start no earlier than 2023-05-03 09:00 | 3D аниматор; Web-дизайнер; Ведущий программист; Мультимедиа-корреспондент; Системный аналитик; Технический писатель; Художник-дизайнер | 7h | 7h | 51 | 51 | 51 |
| 39 | 11.11 | Совещание 11 | manual | 1h | 2023-05-10 09:00 | 2023-05-10 10:00 |  |  | 2023-05-10 09:00 | 2023-05-10 10:00 | 1h |  | start no earlier than 2023-05-10 09:00 | 3D аниматор; Web-дизайнер; Ведущий программист; Мультимедиа-корреспондент; Системный аналитик; Технический писатель; Художник-дизайнер | 7h |  | 51 | 51 |  |
| 40 | 11.12 | Совещание 12 | manual | 1h | 2023-05-17 09:00 | 2023-05-17 10:00 |  |  | 2023-05-17 09:00 | 2023-05-17 10:00 | 1h |  | start no earlier than 2023-05-17 09:00 | 3D аниматор; Web-дизайнер; Ведущий программист; Мультимедиа-корреспондент; Системный аналитик; Технический писатель; Художник-дизайнер | 7h |  | 51 | 51 |  |
| 41 | 11.13 | Совещание 13 | manual | 1h | 2023-05-24 09:00 | 2023-05-24 10:00 |  |  | 2023-05-24 09:00 | 2023-05-24 10:00 | 1h |  | start no earlier than 2023-05-24 09:00 | 3D аниматор; Web-дизайнер; Ведущий программист; Мультимедиа-корреспондент; Системный аналитик; Технический писатель; Художник-дизайнер | 7h |  | 51 | 51 |  |
| 42 | 11.14 | Совещание 14 | manual | 1h | 2023-05-31 09:00 | 2023-05-31 10:00 |  |  | 2023-05-31 09:00 | 2023-05-31 10:00 | 1h |  | start no earlier than 2023-05-31 09:00 | 3D аниматор; Web-дизайнер; Ведущий программист; Мультимедиа-корреспондент; Системный аналитик; Технический писатель; Художник-дизайнер | 7h |  | 51 | 51 |  |
| 43 | 11.15 | Совещание 15 | manual | 1h | 2023-06-07 09:00 | 2023-06-07 10:00 |  |  | 2023-06-07 09:00 | 2023-06-07 10:00 | 1h |  | start no earlier than 2023-06-07 09:00 | 3D аниматор; Web-дизайнер; Ведущий программист; Мультимедиа-корреспондент; Системный аналитик; Технический писатель; Художник-дизайнер | 7h |  | 51 | 51 |  |
| 44 | 11.16 | Совещание 16 | manual | 1h | 2023-06-14 09:00 | 2023-06-14 10:00 |  |  | 2023-06-14 09:00 | 2023-06-14 10:00 | 1h |  | start no earlier than 2023-06-14 09:00 | 3D аниматор; Web-дизайнер; Ведущий программист; Мультимедиа-корреспондент; Системный аналитик; Технический писатель; Художник-дизайнер | 7h |  | 51 | 51 |  |
| 45 | 11.17 | Совещание 17 | manual | 1h | 2023-06-21 09:00 | 2023-06-21 10:00 |  |  | 2023-06-21 09:00 | 2023-06-21 10:00 | 1h |  | start no earlier than 2023-06-21 09:00 | 3D аниматор; Web-дизайнер; Ведущий программист; Мультимедиа-корреспондент; Системный аналитик; Технический писатель; Художник-дизайнер | 7h |  | 51 | 51 |  |
| 46 | 11.18 | Совещание 18 | manual | 1h | 2023-06-28 09:00 | 2023-06-28 10:00 |  |  | 2023-06-28 09:00 | 2023-06-28 10:00 | 1h |  | start no earlier than 2023-06-28 09:00 | 3D аниматор; Web-дизайнер; Ведущий программист; Мультимедиа-корреспондент; Системный аналитик; Технический писатель; Художник-дизайнер | 7h |  | 51 | 51 |  |
| 47 | 11.19 | Совещание 19 | manual | 1h | 2023-07-05 09:00 | 2023-07-05 10:00 |  |  | 2023-07-05 09:00 | 2023-07-05 10:00 | 1h |  | start no earlier than 2023-07-05 09:00 | 3D аниматор; Web-дизайнер; Ведущий программист; Мультимедиа-корреспондент; Системный аналитик; Технический писатель; Художник-дизайнер | 7h |  | 51 | 51 |  |
| 48 | 11.20 | Совещание 20 | manual | 1h | 2023-07-12 09:00 | 2023-07-12 10:00 |  |  | 2023-07-12 09:00 | 2023-07-12 10:00 | 1h |  | start no earlier than 2023-07-12 09:00 | 3D аниматор; Web-дизайнер; Ведущий программист; Мультимедиа-корреспондент; Системный аналитик; Технический писатель; Художник-дизайнер | 7h |  | 51 | 51 |  |
| 49 | 11.21 | Совещание 21 | manual | 1h | 2023-07-19 09:00 | 2023-07-19 10:00 |  |  | 2023-07-19 09:00 | 2023-07-19 10:00 | 1h |  | start no earlier than 2023-07-19 09:00 | 3D аниматор; Web-дизайнер; Ведущий программист; Мультимедиа-корреспондент; Системный аналитик; Технический писатель; Художник-дизайнер | 7h |  | 51 | 51 |  |
| 50 | 11.22 | Совещание 22 | manual | 1h | 2023-07-26 09:00 | 2023-07-26 10:00 |  |  | 2023-07-26 09:00 | 2023-07-26 10:00 | 1h |  | start no earlier than 2023-07-26 09:00 | 3D аниматор; Web-дизайнер; Ведущий программист; Мультимедиа-корреспондент; Системный аналитик; Технический писатель; Художник-дизайнер | 7h |  | 51 | 51 |  |
| 51 | 11.23 | Совещание 23 | manual | 1h | 2023-08-02 09:00 | 2023-08-02 10:00 |  |  | 2023-08-02 09:00 | 2023-08-02 10:00 | 1h |  | start no earlier than 2023-08-02 09:00 | 3D аниматор; Web-дизайнер; Ведущий программист; Мультимедиа-корреспондент; Системный аналитик; Технический писатель; Художник-дизайнер | 7h |  | 51 | 51 |  |

| ID | WBS | Task | Type | Duration | Start | Finish | Complete | Constraint | Resources | Work | Actual work | Cost | Actual cost |
| --- | --- | --- | --- | --- | --- | --- | --- | --- | --- | --- | --- | --- | --- |
| 52 | 12 | **Повышение квалификации программистов** |  | 10.5d | 2023-04-03 09:00 A | 2023-04-17 13:00 A | 100% |  |  | 220h | 220h | 1,826 | 1,826 |
| 53 | 12.1 | Повышение квалификации программистов 1 | manual | 4h | 2023-04-03 09:00 A | 2023-04-03 13:00 A | 100% | start no earlier than 2023-04-03 09:00 | Программист#1; Программист#2; Программист#3; Программист#4; Преподаватель | 20h | 20h | 166 | 166 |
| 54 | 12.2 | Повышение квалификации программистов 2 | manual | 4h | 2023-04-04 09:00 A | 2023-04-04 13:00 A | 100% | start no earlier than 2023-04-04 09:00 | Программист#1; Программист#2; Программист#3; Программист#4; Преподаватель | 20h | 20h | 166 | 166 |
| 55 | 12.3 | Повышение квалификации программистов 3 | manual | 4h | 2023-04-05 09:00 A | 2023-04-05 13:00 A | 100% | start no earlier than 2023-04-05 09:00 | Программист#1; Программист#2; Программист#3; Программист#4; Преподаватель | 20h | 20h | 166 | 166 |
| 56 | 12.4 | Повышение квалификации программистов 4 | manual | 4h | 2023-04-06 09:00 A | 2023-04-06 13:00 A | 100% | start no earlier than 2023-04-06 09:00 | Программист#1; Программист#2; Программист#3; Программист#4; Преподаватель | 20h | 20h | 166 | 166 |
| 57 | 12.5 | Повышение квалификации программистов 5 | manual | 4h | 2023-04-07 09:00 A | 2023-04-07 13:00 A | 100% | start no earlier than 2023-04-07 09:00 | Программист#1; Программист#2; Программист#3; Программист#4; Преподаватель | 20h | 20h | 166 | 166 |
| 58 | 12.6 | Повышение квалификации программистов 6 | manual | 4h | 2023-04-10 09:00 A | 2023-04-10 13:00 A | 100% | start no earlier than 2023-04-10 09:00 | Программист#1; Программист#2; Программист#3; Программист#4; Преподаватель | 20h | 20h | 166 | 166 |
| 59 | 12.7 | Повышение квалификации программистов 7 | manual | 4h | 2023-04-11 09:00 A | 2023-04-11 13:00 A | 100% | start no earlier than 2023-04-11 09:00 | Программист#1; Программист#2; Программист#3; Программист#4; Преподаватель | 20h | 20h | 166 | 166 |
| 60 | 12.8 | Повышение квалификации программистов 8 | manual | 4h | 2023-04-12 09:00 A | 2023-04-12 13:00 A | 100% | start no earlier than 2023-04-12 09:00 | Программист#1; Программист#2; Программист#3; Программист#4; Преподаватель | 20h | 20h | 166 | 166 |
| 61 | 12.9 | Повышение квалификации программистов 9 | manual | 4h | 2023-04-13 09:00 A | 2023-04-13 13:00 A | 100% | start no earlier than 2023-04-13 09:00 | Программист#1; Программист#2; Программист#3; Программист#4; Преподаватель | 20h | 20h | 166 | 166 |
| 62 | 12.10 | Повышение квалификации программистов 10 | manual | 4h | 2023-04-14 09:00 A | 2023-04-14 13:00 A | 100% | start no earlier than 2023-04-14 09:00 | Программист#1; Программист#2; Программист#3; Программист#4; Преподаватель | 20h | 20h | 166 | 166 |
| 63 | 12.11 | Повышение квалификации программистов 11 | manual | 4h | 2023-04-17 09:00 A | 2023-04-17 13:00 A | 100% | start no earlier than 2023-04-17 09:00 | Программист#1; Программист#2; Программист#3; Программист#4; Преподаватель | 20h | 20h | 166 | 166 |
