# Разработка карты города

Schedule from MS Project, 2023-03-01 to 2023-08-18, costs in ₽.

## Calendars

- Стандартный: Mon-Fri 09:00-13:00, 14:00-18:00; Sat-Sun off. Exceptions (off unless hours are given): 2023-03-08 (Международный женский день), 2023-05-01 (Праздник весны и труда), 2023-05-08 to 2023-05-09 (День Победы), 2023-06-12 (День России).

## Resources

| Resource | Group | Rate | Cost per use |
| --- | --- | --- | --- |
| Ведущий программист | Программирование | 10 | 100 |
| Программист#1 | Программирование | 7 | 50 |
| Программист#2 | Программирование | 7 | 50 |
| Программист#3 | Программирование | 7 | 50 |
| Программист#4 | Программирование | 7 | 50 |
| Системный аналитик | Анализ | 20 | 300 |
| Художник-дизайнер | Дизайн | 8 | 70 |
| Технический писатель | Документация | 5 | 20 |
| Web-дизайнер | Internet | 7 | 50 |
| 3D аниматор | Дизайн | 8 | 70 |
| Мультимедиа-корреспондент | M-медиа | 3 | 20 |
| Наборщик данных#1 | Ввод данных | 2 | 10 |
| Наборщик данных#2 | Ввод данных | 2 | 10 |
| Наборщик данных#3 | Ввод данных | 2 | 10 |
| Наборщик данных#4 | Ввод данных | 2 | 10 |
| Наборщик данных#5 | Ввод данных | 2 | 10 |
| Дополнительный сервер |  | 2 |  |

## Schedule

| ID | WBS | Task | Type | Duration | Start | Finish | Predecessors | Baseline start | Baseline finish | Baseline duration | Total slack | Free slack | Resources | Work | Cost | Baseline cost |
| --- | --- | --- | --- | --- | --- | --- | --- | --- | --- | --- | --- | --- | --- | --- | --- | --- |
| 1 | 1 | Начало проекта | milestone | 0w | 2023-03-01 09:00 | 2023-03-01 09:00 |  | 2023-03-01 09:00 | 2023-03-01 09:00 | 0w | 22.38d | 0d |  |  |  |  |
| 2 | 2 | **Дизайн** |  | 30.62d | 2023-03-01 10:00 | 2023-04-13 16:00 | 1 | 2023-03-01 09:00 | 2023-08-08 18:00 | 110d | 22.25d |  |  | 480h | 5,270 | 7,230 |
| 3 | 2.1 | **Разработка дизайна интерфейса** |  | 30.62d | 2023-03-01 10:00 | 2023-04-13 16:00 |  | 2023-03-01 09:00 | 2023-04-05 18:00 | 25d | 22.12d | 0d |  | 320h | 2,770 | 2,770 |
| 4 | 2.1.1 | Разработка 2D графических элементов |  | 3w | 2023-03-01 10:00 | 2023-03-23 12:00 |  | 2023-03-01 09:00 | 2023-03-22 18:00 | 3w | 22.25d | 0d | Художник-дизайнер | 120h | 1,030 | 1,030 |
| 5 | 2.1.2 | Разработка 3D графических элементов |  | 2w | 2023-03-01 10:00 | 2023-03-16 11:00 | 4SS | 2023-03-01 09:00 | 2023-03-15 18:00 | 2w | 22.25d | 0d | 3D аниматор | 80h | 710 | 710 |
| 6 | 2.1.3 | Создание заставки |  | 3w | 2023-03-16 12:00 | 2023-04-13 16:00 | 5 | 2023-03-16 09:00 | 2023-04-05 18:00 | 3w | 22.12d |  | 3D аниматор | 120h | 1,030 | 1,030 |
| 7 | 2.2 | Разработка дизайна сайта |  | 1.43w | 2023-03-28 14:00 | 2023-04-06 15:00 | 17 | 2023-07-31 09:00 | 2023-08-08 18:00 | 1.4w | 92.25d |  | Web-дизайнер; 3D аниматор; Художник-дизайнер | 120h | 1,110 | 1,110 |
| 8 | 2.3 | Разработка дизайна руководства |  | 1w | 2023-03-23 14:00 | 2023-03-30 13:00 |  | 2023-07-26 09:00 | 2023-08-01 18:00 | 1w | 34.38d | 0d | Художник-дизайнер | 40h | 390 | 390 |
| 9 | 3 | **Программирование** |  | 102.5d | 2023-03-23 12:00 | 2023-08-18 17:00 |  |  |  |  | 0d |  |  | 1840h | 16,130 |  |
| 10 | 3.1 | Программирование средств обработки базы объектов |  | 3w | 2023-04-06 15:00 | 2023-04-27 15:00 | 16 | 2023-04-06 09:00 | 2023-04-26 18:00 | 3w | 17.25d | 0d |  |  |  |  |
| 11 | 3.2 | Программирование интерфейса |  | 3w | 2023-04-13 16:00 | 2023-05-05 16:00 | 3, 14 | 2023-07-19 09:00 | 2023-08-08 18:00 | 3w | 22.12d | 0d | Программист#3; Программист#4 | 240h | 1,780 | 3,460 |
| 12 | 3.3 | Создание модели ядра |  | 5.12w | 2023-03-23 12:00 | 2023-04-27 18:00 | 15 | 2023-03-23 09:00 | 2023-04-26 18:00 | 5w | 0d |  | Программист#1; Ведущий программист | 400h | 3,550 | 3,550 |
| 13 | 3.4 | Создание рабочей версии ядра |  | 10.35w | 2023-06-07 10:00 | 2023-08-18 17:00 | 23 | 2023-05-05 09:00 | 2023-07-18 18:00 | 10w | 0d | 15.12d | Программист#1; Программист#2; Ведущий программист | 1200h | 9,800 | 9,800 |
| 14 | 4 | **Проектирование** |  | 25.5d | 2023-03-01 10:00 | 2023-04-06 15:00 |  |  |  |  | 0d |  |  | 328h | 7,006 |  |
| 15 | 4.1 | Анализ и проектирование ядра |  | 3.05w | 2023-03-01 10:00 | 2023-03-23 12:00 |  | 2023-03-01 09:00 | 2023-03-22 18:00 | 3w | 0d |  | Ведущий программист; Системный аналитик | 240h | 4,000 | 4,000 |
| 16 | 4.2 | Анализ и построение структуры базы объектов |  | 2w | 2023-03-23 14:00 | 2023-04-06 15:00 |  | 2023-03-23 09:00 | 2023-04-05 18:00 | 2w | 17.25d | 0d | Системный аналитик | 80h | 1,900 | 1,900 |
| 17 | 4.3 | Разработка структуры сайта |  | 1d | 2023-03-27 14:00 | 2023-03-28 13:00 | 26SS | 2023-07-28 09:00 | 2023-07-28 18:00 | 1d | 34.38d | 0d | Web-дизайнер | 8h | 106 | 106 |
| 18 | 5 | **Работа с данными** |  | 64.88d | 2023-04-20 16:00 | 2023-07-26 15:00 | 11FS-10d | 2023-03-23 09:00 | 2023-07-25 18:00 | 85d | 17.25d |  | Дополнительный сервер | 5087h | 11,134 | 13,720 |
| 19 | 5.1 | Наполнение базы объектов |  | 12w | 2023-04-27 15:00 | 2023-07-26 15:00 | 10 | 2023-04-27 09:00 | 2023-07-25 18:00 | 12w | 17.25d |  | Наборщик данных#1; Наборщик данных#2; Наборщик данных#3; Наборщик данных#4; Наборщик данных#5 | 2400h | 4,850 | 4,850 |
| 20 | 5.2 | Наполнение сайта |  | 3w | 2023-04-20 16:00 | 2023-05-17 10:00 | 8 | 2023-08-09 09:00 | 2023-08-29 18:00 | 3w | 51.25d | 0d | Web-дизайнер | 120h | 890 | 890 |
| 21 | 5.3 | Создание мультимедиа – наполнения |  | 6w | 2023-04-20 16:00 | 2023-06-07 13:00 | 3 | 2023-04-06 09:00 | 2023-05-22 18:00 | 6w | 51.38d |  | Мультимедиа-корреспондент | 240h | 740 | 740 |
| 22 | 6 | **Тестирование** |  | 25.62d | 2023-04-28 09:00 | 2023-06-07 15:00 |  | 2023-03-01 09:00 | 2023-07-18 18:00 | 95d | 0d |  |  | 520h | 4,370 | 18,680 |
| 23 | 6.1 | Тестирование модели ядра |  | 1w | 2023-04-28 09:00 | 2023-05-05 18:00 | 12 | 2023-04-27 09:00 | 2023-05-04 18:00 | 1w | 0d |  | Программист#1 | 40h | 330 | 330 |
| 24 | 6.2 | Тестирование сайта |  | 4.1w | 2023-05-10 10:00 | 2023-06-07 15:00 | 20FS-1w | 2023-08-23 09:00 | 2023-09-19 18:00 | 4w | 51.25d | 0d | Ведущий программист; Программист#1; Программист#2 | 480h | 4,040 | 4,040 |

| ID | WBS | Task | Type | Duration | Start | Finish | Predecessors | Baseline start | Baseline finish | Baseline duration | Total slack | Free slack | Constraint | Resources | Work | Cost | Baseline cost |
| --- | --- | --- | --- | --- | --- | --- | --- | --- | --- | --- | --- | --- | --- | --- | --- | --- | --- |
| 25 | 7 | **Документация** |  | 43.25d | 2023-03-27 14:00 | 2023-05-30 16:00 |  | 2023-07-26 09:00 | 2023-08-17 18:00 | 17d | 34.38d |  |  |  | 200h | 1,040 | 1,010 |
| 26 | 7.1 | Написание руководства пользователя |  | 3w | 2023-03-27 14:00 | 2023-04-17 16:00 | 8SS+2d | 2023-07-28 09:00 | 2023-08-17 18:00 | 3w | 34.38d | 0d |  | Технический писатель | 120h | 620 | 620 |
| 27 | 7.2 | Создание справочной системы |  | 3w | 2023-05-05 16:00 | 2023-05-30 16:00 | 11 | 2023-08-17 09:00 | 2023-09-06 18:00 | 3w | 57.12d |  |  | Технический писатель | 80h | 420 | 420 |
| 28 | 8 | Сдача сайта в эксплуатацию | milestone | 0w | 2023-06-07 15:00 | 2023-06-07 15:00 | 24 | 2023-09-19 18:00 | 2023-09-19 18:00 | 0w | 51.25d | 50.12d |  |  |  |  |  |
| 29 | 9 | **Совещание** |  | 110.12d | 2023-03-01 09:00 | 2023-08-09 10:00 |  |  |  |  | 0d |  |  |  | 168h | 3,144 |  |
| 30 | 9.1 | Совещание 1 | manual | 1h | 2023-03-01 09:00 | 2023-03-01 10:00 |  |  |  |  |  |  | start no earlier than 2023-03-01 09:00 | 3D аниматор; Web-дизайнер; Ведущий программист; Мультимедиа-корреспондент; Системный аналитик; Технический писатель; Художник-дизайнер | 7h | 131 |  |
| 31 | 9.2 | Совещание 2 | manual | 1h | 2023-03-08 09:00 | 2023-03-08 10:00 |  |  |  |  |  |  | start no earlier than 2023-03-08 09:00 | 3D аниматор; Web-дизайнер; Ведущий программист; Мультимедиа-корреспондент; Системный аналитик; Технический писатель; Художник-дизайнер | 7h | 131 |  |
| 32 | 9.3 | Совещание 3 | manual | 1h | 2023-03-15 09:00 | 2023-03-15 10:00 |  |  |  |  |  |  | start no earlier than 2023-03-15 09:00 | 3D аниматор; Web-дизайнер; Ведущий программист; Мультимедиа-корреспондент; Системный аналитик; Технический писатель; Художник-дизайнер | 7h | 131 |  |
| 33 | 9.4 | Совещание 4 | manual | 1h | 2023-03-22 09:00 | 2023-03-22 10:00 |  |  |  |  |  |  | start no earlier than 2023-03-22 09:00 | 3D аниматор; Web-дизайнер; Ведущий программист; Мультимедиа-корреспондент; Системный аналитик; Технический писатель; Художник-дизайнер | 7h | 131 |  |
| 34 | 9.5 | Совещание 5 | manual | 1h | 2023-03-29 09:00 | 2023-03-29 10:00 |  |  |  |  |  |  | start no earlier than 2023-03-29 09:00 | 3D аниматор; Web-дизайнер; Ведущий программист; Мультимедиа-корреспондент; Системный аналитик; Технический писатель; Художник-дизайнер | 7h | 131 |  |
| 35 | 9.6 | Совещание 6 | manual | 1h | 2023-04-05 09:00 | 2023-04-05 10:00 |  |  |  |  |  |  | start no earlier than 2023-04-05 09:00 | 3D аниматор; Web-дизайнер; Ведущий программист; Мультимедиа-корреспондент; Системный аналитик; Технический писатель; Художник-дизайнер | 7h | 131 |  |
| 36 | 9.7 | Совещание 7 | manual | 1h | 2023-04-12 09:00 | 2023-04-12 10:00 |  |  |  |  |  |  | start no earlier than 2023-04-12 09:00 | 3D аниматор; Web-дизайнер; Ведущий программист; Мультимедиа-корреспондент; Системный аналитик; Технический писатель; Художник-дизайнер | 7h | 131 |  |
| 37 | 9.8 | Совещание 8 | manual | 1h | 2023-04-19 09:00 | 2023-04-19 10:00 |  |  |  |  |  |  | start no earlier than 2023-04-19 09:00 | 3D аниматор; Web-дизайнер; Ведущий программист; Мультимедиа-корреспондент; Системный аналитик; Технический писатель; Художник-дизайнер | 7h | 131 |  |
| 38 | 9.9 | Совещание 9 | manual | 1h | 2023-04-26 09:00 | 2023-04-26 10:00 |  |  |  |  |  |  | start no earlier than 2023-04-26 09:00 | 3D аниматор; Web-дизайнер; Ведущий программист; Мультимедиа-корреспондент; Системный аналитик; Технический писатель; Художник-дизайнер | 7h | 131 |  |
| 39 | 9.10 | Совещание 10 | manual | 1h | 2023-05-03 09:00 | 2023-05-03 10:00 |  |  |  |  |  |  | start no earlier than 2023-05-03 09:00 | 3D аниматор; Web-дизайнер; Ведущий программист; Мультимедиа-корреспондент; Системный аналитик; Технический писатель; Художник-дизайнер | 7h | 131 |  |
| 40 | 9.11 | Совещание 11 | manual | 1h | 2023-05-10 09:00 | 2023-05-10 10:00 |  |  |  |  |  |  | start no earlier than 2023-05-10 09:00 | 3D аниматор; Web-дизайнер; Ведущий программист; Мультимедиа-корреспондент; Системный аналитик; Технический писатель; Художник-дизайнер | 7h | 131 |  |
| 41 | 9.12 | Совещание 12 | manual | 1h | 2023-05-17 09:00 | 2023-05-17 10:00 |  |  |  |  |  |  | start no earlier than 2023-05-17 09:00 | 3D аниматор; Web-дизайнер; Ведущий программист; Мультимедиа-корреспондент; Системный аналитик; Технический писатель; Художник-дизайнер | 7h | 131 |  |
| 42 | 9.13 | Совещание 13 | manual | 1h | 2023-05-24 09:00 | 2023-05-24 10:00 |  |  |  |  |  |  | start no earlier than 2023-05-24 09:00 | 3D аниматор; Web-дизайнер; Ведущий программист; Мультимедиа-корреспондент; Системный аналитик; Технический писатель; Художник-дизайнер | 7h | 131 |  |
| 43 | 9.14 | Совещание 14 | manual | 1h | 2023-05-31 09:00 | 2023-05-31 10:00 |  |  |  |  |  |  | start no earlier than 2023-05-31 09:00 | 3D аниматор; Web-дизайнер; Ведущий программист; Мультимедиа-корреспондент; Системный аналитик; Технический писатель; Художник-дизайнер | 7h | 131 |  |
| 44 | 9.15 | Совещание 15 | manual | 1h | 2023-06-07 09:00 | 2023-06-07 10:00 |  |  |  |  |  |  | start no earlier than 2023-06-07 09:00 | 3D аниматор; Web-дизайнер; Ведущий программист; Мультимедиа-корреспондент; Системный аналитик; Технический писатель; Художник-дизайнер | 7h | 131 |  |
| 45 | 9.16 | Совещание 16 | manual | 1h | 2023-06-14 09:00 | 2023-06-14 10:00 |  |  |  |  |  |  | start no earlier than 2023-06-14 09:00 | 3D аниматор; Web-дизайнер; Ведущий программист; Мультимедиа-корреспондент; Системный аналитик; Технический писатель; Художник-дизайнер | 7h | 131 |  |
| 46 | 9.17 | Совещание 17 | manual | 1h | 2023-06-21 09:00 | 2023-06-21 10:00 |  |  |  |  |  |  | start no earlier than 2023-06-21 09:00 | 3D аниматор; Web-дизайнер; Ведущий программист; Мультимедиа-корреспондент; Системный аналитик; Технический писатель; Художник-дизайнер | 7h | 131 |  |
| 47 | 9.18 | Совещание 18 | manual | 1h | 2023-06-28 09:00 | 2023-06-28 10:00 |  |  |  |  |  |  | start no earlier than 2023-06-28 09:00 | 3D аниматор; Web-дизайнер; Ведущий программист; Мультимедиа-корреспондент; Системный аналитик; Технический писатель; Художник-дизайнер | 7h | 131 |  |
| 48 | 9.19 | Совещание 19 | manual | 1h | 2023-07-05 09:00 | 2023-07-05 10:00 |  |  |  |  |  |  | start no earlier than 2023-07-05 09:00 | 3D аниматор; Web-дизайнер; Ведущий программист; Мультимедиа-корреспондент; Системный аналитик; Технический писатель; Художник-дизайнер | 7h | 131 |  |
| 49 | 9.20 | Совещание 20 | manual | 1h | 2023-07-12 09:00 | 2023-07-12 10:00 |  |  |  |  |  |  | start no earlier than 2023-07-12 09:00 | 3D аниматор; Web-дизайнер; Ведущий программист; Мультимедиа-корреспондент; Системный аналитик; Технический писатель; Художник-дизайнер | 7h | 131 |  |
| 50 | 9.21 | Совещание 21 | manual | 1h | 2023-07-19 09:00 | 2023-07-19 10:00 |  |  |  |  |  |  | start no earlier than 2023-07-19 09:00 | 3D аниматор; Web-дизайнер; Ведущий программист; Мультимедиа-корреспондент; Системный аналитик; Технический писатель; Художник-дизайнер | 7h | 131 |  |
| 51 | 9.22 | Совещание 22 | manual | 1h | 2023-07-26 09:00 | 2023-07-26 10:00 |  |  |  |  |  |  | start no earlier than 2023-07-26 09:00 | 3D аниматор; Web-дизайнер; Ведущий программист; Мультимедиа-корреспондент; Системный аналитик; Технический писатель; Художник-дизайнер | 7h | 131 |  |
| 52 | 9.23 | Совещание 23 | manual | 1h | 2023-08-02 09:00 | 2023-08-02 10:00 |  |  |  |  |  |  | start no earlier than 2023-08-02 09:00 | 3D аниматор; Web-дизайнер; Ведущий программист; Мультимедиа-корреспондент; Системный аналитик; Технический писатель; Художник-дизайнер | 7h | 131 |  |
| 53 | 9.24 | Совещание 24 | manual | 1h | 2023-08-09 09:00 | 2023-08-09 10:00 |  |  |  |  |  |  | start no earlier than 2023-08-09 09:00 | 3D аниматор; Web-дизайнер; Ведущий программист; Мультимедиа-корреспондент; Системный аналитик; Технический писатель; Художник-дизайнер | 7h | 131 |  |
