# RK1

Schedule from MS Project, 2023-04-03 to 2023-07-20, status date 2023-07-03, costs in ₽, A marks actual dates.
Группа из 8 чел., длительность не более 4 мес., бюджет не более 620 тыс. руб.

## Calendars

- Стандартный: Mon-Fri 09:00-13:00, 14:00-18:00; Sat-Sun off. Exceptions (off unless hours are given): 2023-04-25 09:00-13:00, 14:00-15:00 (Профилактика оборудования 1), 2023-05-01 (Праздник весны и труда), 2023-05-08 to 2023-05-09 (День Победы), 2023-05-10 09:00-13:00, 14:00-15:00 (Профилактика оборудования 2), 2023-05-23 09:00-13:00, 14:00-15:00 (Профилактика оборудования 3), 2023-06-06 09:00-13:00, 14:00-15:00 (Профилактика оборудования 4), 2023-06-12 (День России), 2023-06-20 09:00-13:00, 14:00-15:00 (Профилактика оборудования 5), 2023-07-04 09:00-13:00, 14:00-15:00 (Профилактика оборудования 6), 2023-07-18 09:00-13:00, 14:00-15:00 (Профилактика оборудования 7).

## Resources

| Resource | Group | Unit | Rate | Cost per use |
| --- | --- | --- | --- | --- |
| Аналитик |  |  | 500 | 5000 |
| Ведущий программист | Программисты |  | 437.5 | 3000 |
| Программист 1 | Программисты |  | 312.5 | 2000 |
| Программист 2 | Программисты |  | 312.5 | 2000 |
| Программист 3 | Программисты |  | 312.5 | 2000 |
| Технический писатель |  |  | 250 | 1500 |
| Наборщик данных | Технический персонал |  | 218.75 | 1000 |
| Сервер базы данных | Оборудование |  | 25000 | 10000 |
| Картриджи для принтера | Расходные материалы | ₽/шт | 31.25 |  |
| Бумага | Расходные материалы | ₽/пач | 1.88 |  |

## Schedule

| ID | WBS | Task | Type | Duration | Start | Finish | Predecessors | Complete | Remaining | Baseline start | Baseline finish | Baseline duration | Total slack | Constraint | Resources | Work | Actual work | Cost | Baseline cost | Actual cost |
| --- | --- | --- | --- | --- | --- | --- | --- | --- | --- | --- | --- | --- | --- | --- | --- | --- | --- | --- | --- | --- |
| 1 | 1 | Начало реализации проекта | milestone | 0d | 2023-04-03 09:00 A | 2023-04-03 09:00 A |  | 100% |  | 2023-04-03 09:00 | 2023-04-03 09:00 | 0d |  |  |  |  |  |  |  |  |
| 2 | 2 | **Программирование** |  | 36.09d | 2023-04-04 09:00 A | 2023-05-30 10:45 A |  | 100% |  | 2023-04-04 09:00 | 2023-05-24 10:45 | 32.09d |  |  | Сервер базы данных [200%] | 832h | 832h | 370,141.5 | 341,641.5 | 370,141.5 |
| 3 | 2.1 | Постановка задачи |  | 7d | 2023-04-04 09:00 A | 2023-04-12 18:00 A | 1FS+1d | 100% |  | 2023-04-04 09:00 | 2023-04-10 18:00 | 5d |  |  | Аналитик; Ведущий программист | 80h | 80h | 45,500 | 45,500 | 45,500 |
| 4 | 2.2 | Разработка интерфейса |  | 10d | 2023-04-13 09:00 A | 2023-04-27 12:00 A | 3 | 100% |  | 2023-04-11 09:00 | 2023-04-24 18:00 | 10d |  |  | Ведущий программист; Программист 1 | 160h | 160h | 65,000 | 65,000 | 65,000 |
| 5 | 2.3 | Разработка модулей обработки данных |  | 16.32d | 2023-04-27 12:00 A | 2023-05-25 12:34 A | 4 | 100% |  | 2023-04-25 09:00 | 2023-05-23 09:34 | 16.32d |  |  | Программист 2; Программист 3 | 240h | 240h | 79,000 | 79,000 | 79,000 |
| 6 | 2.4 | Разработка базы данных |  | 15.09d | 2023-04-13 09:00 A | 2023-05-05 12:45 A | 3 | 100% |  | 2023-04-11 09:00 | 2023-05-03 12:45 | 15.09d |  |  | Аналитик; Программист 1; Программист 2; Программист 3 | 240h | 240h | 93,641.5 | 93,641.5 | 93,641.5 |
| 7 | 2.5 | Заполнение базы данных |  | 14d | 2023-05-05 12:45 A | 2023-05-30 10:45 A | 6 | 100% |  | 2023-05-03 12:45 | 2023-05-24 10:45 | 12d |  |  | Наборщик данных | 112h | 112h | 25,500 | 22,000 | 25,500 |
| 8 | 3 | Программирование завершено | milestone | 0d | 2023-05-26 10:45 A | 2023-05-26 10:45 A | 5, 7 | 100% |  | 2023-05-24 10:45 | 2023-05-24 10:45 | 0d |  |  |  |  |  |  |  |  |
| 9 | 4 | **Тестирование и отладка** |  | 24.23d | 2023-05-18 16:45 A | 2023-06-26 10:34 A |  | 100% |  | 2023-05-16 16:45 | 2023-06-22 10:34 | 24.23d |  |  |  | 320h | 320h | 125,000 | 125,000 | 125,000 |
| 10 | 4.1 | Подготовка тестовых наборов данных |  | 9.23d | 2023-05-18 16:45 A | 2023-06-01 12:34 A | 8FS-5d | 100% |  | 2023-05-16 16:45 | 2023-05-30 12:34 | 9.23d |  |  | Программист 1; Программист 3 | 80h | 80h | 29,000 | 29,000 | 29,000 |
| 11 | 4.2 | Тестирование и исправление ошибок |  | 15d | 2023-06-01 12:34 A | 2023-06-26 10:34 A | 10 | 100% |  | 2023-05-30 12:34 | 2023-06-22 10:34 | 15d |  |  | Ведущий программист; Программист 2 | 240h | 240h | 95,000 | 95,000 | 95,000 |
| 12 | 5 | Отладка завершена | milestone | 0d | 2023-06-26 10:34 A | 2023-06-26 10:34 A | 11 | 100% |  | 2023-06-22 10:34 | 2023-06-22 10:34 | 0d |  |  |  |  |  |  |  |  |
| 13 | 6 | **Разработка документации** |  | 25d | 2023-06-14 09:00 A | 2023-07-20 10:00 |  | 55% | 11.38d | 2023-06-07 14:45 | 2023-07-14 11:45 | 25d | 0d |  | Бумага [1 ₽/пач]; Картриджи для принтера [1 ₽/шт] | 600h | 146.44h | 59,625 | 59,500 | 30,870.1 |
| 14 | 6.1 | Составление программной документации |  | 10d | 2023-06-14 09:00 A | 2023-06-28 12:00 A | 8SS+10d | 100% |  | 2023-06-07 14:45 | 2023-06-22 17:45 | 10d |  |  | Технический писатель | 80h | 80h | 21,500 | 21,500 | 21,500 |
| 15 | 6.2 | Составление пользовательской документации |  | 15d | 2023-06-28 12:00 A | 2023-07-20 10:00 | 14 | 24% | 11.38d | 2023-06-22 17:45 | 2023-07-14 11:45 | 15d | 0d |  | Технический писатель | 120h | 29h | 31,500 | 31,500 | 8,750 |
| 16 | 7 | Конец проекта | milestone | 0d | 2023-07-20 10:00 | 2023-07-20 10:00 | 15 |  |  | 2023-07-14 11:45 | 2023-07-14 11:45 | 0d | 0d |  |  |  |  |  |  |  |
| 17 | 8 | **Профилактика оборудования** |  | 54.12d | 2023-04-25 09:00 A | 2023-07-18 12:00 |  | 71% | 15.46d | 2023-04-25 09:00 | 2023-07-04 12:00 | 44.5d | 0d |  |  | 21h | 15h | 21,000 | 18,000 | 15,000 |
| 18 | 8.1 | Профилактика оборудования 1 | manual | 3h | 2023-04-25 09:00 A | 2023-04-25 12:00 A |  | 100% |  | 2023-04-25 09:00 | 2023-04-25 12:00 | 3h |  | start no earlier than 2023-04-25 09:00 |  | 3h | 3h | 3,000 | 3,000 | 3,000 |
| 19 | 8.2 | Профилактика оборудования 2 | manual | 3h | 2023-05-10 09:00 A | 2023-05-10 12:00 A |  | 100% |  | 2023-05-10 09:00 | 2023-05-10 12:00 | 3h |  | start no earlier than 2023-05-10 09:00 |  | 3h | 3h | 3,000 | 3,000 | 3,000 |
| 20 | 8.3 | Профилактика оборудования 3 | manual | 3h | 2023-05-23 09:00 A | 2023-05-23 12:00 A |  | 100% |  | 2023-05-23 09:00 | 2023-05-23 12:00 | 3h |  | start no earlier than 2023-05-23 09:00 |  | 3h | 3h | 3,000 | 3,000 | 3,000 |
| 21 | 8.4 | Профилактика оборудования 4 | manual | 3h | 2023-06-06 09:00 A | 2023-06-06 12:00 A |  | 100% |  | 2023-06-06 09:00 | 2023-06-06 12:00 | 3h |  | start no earlier than 2023-06-06 09:00 |  | 3h | 3h | 3,000 | 3,000 | 3,000 |
| 22 | 8.5 | Профилактика оборудования 5 | manual | 3h | 2023-06-20 09:00 A | 2023-06-20 12:00 A |  | 100% |  | 2023-06-20 09:00 | 2023-06-20 12:00 | 3h |  | start no earlier than 2023-06-20 09:00 |  | 3h | 3h | 3,000 | 3,000 | 3,000 |
| 23 | 8.6 | Профилактика оборудования 6 | manual | 3h | 2023-07-04 09:00 | 2023-07-04 12:00 |  |  |  | 2023-07-04 09:00 | 2023-07-04 12:00 | 3h |  | start no earlier than 2023-07-04 09:00 |  | 3h |  | 3,000 | 3,000 |  |
| 24 | 8.7 | Профилактика оборудования 7 | manual | 3h | 2023-07-18 09:00 | 2023-07-18 12:00 |  |  |  | 2023-07-04 09:00 | 2023-07-04 12:00 | 3h |  | start no earlier than 2023-07-18 09:00 |  | 3h |  | 3,000 | 3,000 |  |
